# Cronograma proyecto LACTAR

Schedule from MS Project, 2026-04-02 to 2026-12-01.

## Calendars

- Standard: Mon-Fri 08:00-12:00, 13:00-17:00; Sat-Sun off.

## Resources

| Resource |
| --- |
| Esperanza, Franco |
| Moritan, Victoria |
| Veliz Condori, Ruben |
| Pagani, Franco |
| Takara, Joaquin |

## Schedule

| ID | WBS | Task | Duration | Start | Finish | Predecessors | Total slack | Resources | Work |
| --- | --- | --- | --- | --- | --- | --- | --- | --- | --- |
| 1 | 1 | **Proyecto LACTAR** | 173d | 2026-04-02 | 2026-12-01 |  | 0d |  | 2240h |
| 2 | 1.1 | **Relevamiento y definición del alcance** | 32d | 2026-04-02 | 2026-05-18 |  | 0d |  | 272h |
| 3 | 1.1.1 | **Relevamiento del negocio.** | 10d | 2026-04-02 | 2026-04-16 |  | 0d |  | 80h |
| 4 | 1.1.1.1 | Realizar y documentar entrevistas con el cliente | 7d | 2026-04-02 | 2026-04-13 |  | 0d | Esperanza, Franco | 56h |
| 5 | 1.1.1.2 | Identificar áreas, responsables y procesos principales | 3d | 2026-04-13 | 2026-04-16 | 4 | 0d | Moritan, Victoria | 24h |
| 6 | 1.1.2 | **Identificación, definición y redacción de la problemática.** | 6d | 2026-04-16 | 2026-04-24 |  | 0d |  | 48h |
| 7 | 1.1.2.1 | Registrar problemas actuales del negocio | 3d | 2026-04-16 | 2026-04-21 | 5 | 0d | Veliz Condori, Ruben | 24h |
| 8 | 1.1.2.2 | Redactar la problemática del proyecto | 3d | 2026-04-21 | 2026-04-24 | 7 | 0d | Pagani, Franco | 24h |
| 9 | 1.1.3 | Definición de objetivos (General y específicos). | 3d | 2026-04-24 | 2026-04-29 | 8 | 0d | Takara, Joaquin | 24h |
| 10 | 1.1.4 | **Definición del alcance.** | 5d | 2026-04-29 | 2026-05-06 |  | 0d |  | 40h |
| 11 | 1.1.4.1 | Definir módulos incluidos en el sistema | 4d | 2026-04-29 | 2026-05-05 | 9 | 0d | Esperanza, Franco | 32h |
| 12 | 1.1.4.2 | Definir exclusiones del proyecto | 1d | 2026-05-05 | 2026-05-06 | 11 | 0d | Veliz Condori, Ruben | 8h |
| 13 | 1.1.5 | **Definición de requerimientos.** | 4d | 2026-05-06 | 2026-05-12 |  | 0d |  | 48h |
| 14 | 1.1.5.1 | Redactar requerimientos funcionales | 4d | 2026-05-06 | 2026-05-12 | 12 | 0d | Esperanza, Franco | 32h |
| 15 | 1.1.5.2 | Redactar requerimientos no funcionales | 2d | 2026-05-06 | 2026-05-08 | 12 | 2d | Veliz Condori, Ruben | 16h |
| 16 | 1.1.6 | Elaboración de la EDT del proyecto. | 4d | 2026-05-12 | 2026-05-18 | 14, 15 | 0d | Takara, Joaquin | 32h |
| 17 | 1.2 | **Análisis del sistema** | 22d | 2026-05-18 | 2026-06-17 |  | 0d |  | 256h |
| 18 | 1.2.1 | **Definición de los diagramas de actividades.** | 7d | 2026-05-18 | 2026-05-27 |  | 0d |  | 72h |
| 19 | 1.2.1.1 | Identificar procesos principales del sistema | 2d | 2026-05-18 | 2026-05-20 | 16 | 0d | Moritan, Victoria | 16h |
| 20 | 1.2.1.2 | Realizar diagramas de actividades | 7d | 2026-05-18 | 2026-05-27 | 16 | 134d | Takara, Joaquin | 56h |
| 21 | 1.2.2 | **Elaboración del diagrama de casos de uso.** | 9d | 2026-05-20 | 2026-06-02 |  | 0d |  | 72h |
| 22 | 1.2.2.1 | Identificar actores del sistema | 1d | 2026-05-20 | 2026-05-21 | 19 | 0d | Veliz Condori, Ruben | 8h |
| 23 | 1.2.2.2 | Elaborar diagrama de casos de uso general | 4d | 2026-05-21 | 2026-05-27 | 22 | 0d | Pagani, Franco | 32h |
| 24 | 1.2.2.3 | Elaborar diagramas de casos de uso por módulo | 4d | 2026-05-27 | 2026-06-02 | 23 | 0d | Esperanza, Franco | 32h |

| ID | WBS | Task | Duration | Start | Finish | Predecessors | Total slack | Free slack | Resources | Work |
| --- | --- | --- | --- | --- | --- | --- | --- | --- | --- | --- |
| 25 | 1.2.3 | **Especificación de casos de uso.** | 8d | 2026-06-02 | 2026-06-12 |  | 0d |  |  | 72h |
| 26 | 1.2.3.1 | Seleccionar casos de uso a especificar | 1d | 2026-06-10 | 2026-06-11 | 24 | 123d |  | Moritan, Victoria | 8h |
| 27 | 1.2.3.2 | Redactar especificaciones de casos de uso | 6d | 2026-06-02 | 2026-06-10 | 24 | 0d |  | Moritan, Victoria | 48h |
| 28 | 1.2.3.3 | Revisar consistencia entre diagramas y especificaciones | 2d | 2026-06-10 | 2026-06-12 | 27 | 0d |  | Pagani, Franco | 16h |
| 29 | 1.2.4 | **Identificación de las entidades del dominio.** | 3d | 2026-06-12 | 2026-06-17 |  | 0d |  |  | 40h |
| 30 | 1.2.4.1 | Identificar entidades principales del sistema | 3d | 2026-06-12 | 2026-06-17 | 28 | 5d | 0d | Takara, Joaquin | 24h |
| 31 | 1.2.4.2 | Definir atributos principales de las entidades | 2d | 2026-06-12 | 2026-06-16 | 28 | 0d |  | Veliz Condori, Ruben | 16h |
| 32 | 1.3 | **Diseño del sistema** | 17d | 2026-06-16 | 2026-07-09 |  | 0d |  |  | 208h |
| 33 | 1.3.1 | Diseño del modelo entidad-relación. | 4d | 2026-06-17 | 2026-06-23 | 30, 31 | 5d | 0d | Pagani, Franco | 32h |
| 34 | 1.3.2 | Diseño del diagrama de clases. | 5d | 2026-06-23 | 2026-06-30 | 33 | 5d |  | Pagani, Franco | 40h |
| 35 | 1.3.3 | **Diseño de las interfaces de las distintas ventanas.** | 12d | 2026-06-16 | 2026-07-02 |  | 0d |  |  | 96h |
| 36 | 1.3.3.1 | Definir pantallas principales del sistema | 5d | 2026-06-16 | 2026-06-23 | 28, 31 | 0d |  | Esperanza, Franco | 40h |
| 37 | 1.3.3.2 | Diseñar prototipos de interfaces | 4d | 2026-06-23 | 2026-06-29 | 36 | 0d |  | Moritan, Victoria | 32h |
| 38 | 1.3.3.3 | Revisar navegación entre pantallas | 3d | 2026-06-29 | 2026-07-02 | 37 | 0d |  | Esperanza, Franco | 24h |
| 39 | 1.3.4 | Definición de las herramientas de desarrollo. | 3d | 2026-07-02 | 2026-07-07 | 38 | 0d |  | Veliz Condori, Ruben | 24h |
| 40 | 1.3.5 | Validar diseño con el equipo | 2d | 2026-07-07 | 2026-07-09 | 34, 38, 39 | 0d |  | Moritan, Victoria | 16h |
| 41 | 1.4 | **Construcción del sistema** | 75d | 2026-07-09 | 2026-10-22 |  | 0d |  |  | 992h |
| 42 | 1.4.1 | **Módulo de usuarios y seguridad.** | 14d | 2026-07-09 | 2026-07-29 |  | 0d |  |  | 112h |
| 43 | 1.4.1.1 | Desarrollar login de usuarios | 7d | 2026-07-09 | 2026-07-20 | 40 | 0d |  | Veliz Condori, Ruben | 56h |
| 44 | 1.4.1.2 | Desarrollar perfiles y permisos | 7d | 2026-07-20 | 2026-07-29 | 43 | 0d |  | Veliz Condori, Ruben | 56h |
| 45 | 1.4.2 | **Módulo de producción por lote.** | 14d | 2026-07-09 | 2026-07-29 |  | 0d |  |  | 112h |
| 46 | 1.4.2.1 | Desarrollar registro de producción por lote | 7d | 2026-07-09 | 2026-07-20 | 40 | 0d |  | Pagani, Franco | 56h |
| 47 | 1.4.2.2 | Desarrollar gestión de datos de lote | 7d | 2026-07-20 | 2026-07-29 | 46 | 0d |  | Pagani, Franco | 56h |
| 48 | 1.4.3 | **Módulo de trazabilidad.** | 14d | 2026-07-29 | 2026-08-18 |  | 32d |  |  | 112h |
| 49 | 1.4.3.1 | Desarrollar consulta de trazabilidad por lote | 7d | 2026-07-29 | 2026-08-07 | 47 | 32d | 0d | Pagani, Franco | 56h |
| 50 | 1.4.3.2 | Desarrollar historial de movimientos del lote | 7d | 2026-08-07 | 2026-08-18 | 49 | 32d |  | Pagani, Franco | 56h |

| ID | WBS | Task | Duration | Start | Finish | Predecessors | Total slack | Free slack | Resources | Work |
| --- | --- | --- | --- | --- | --- | --- | --- | --- | --- | --- |
| 51 | 1.4.4 | **Módulo de stock.** | 31d | 2026-07-29 | 2026-09-10 |  | 0d |  |  | 112h |
| 52 | 1.4.4.1 | Desarrollar actualización de stock por lote | 7d | 2026-07-29 | 2026-08-07 | 47 | 0d |  | Takara, Joaquin | 56h |
| 53 | 1.4.4.2 | Desarrollar control de estados del producto | 7d | 2026-09-01 | 2026-09-10 | 52 | 15d |  | Takara, Joaquin | 56h |
| 54 | 1.4.5 | **Módulo ABML de clientes.** | 7d | 2026-07-29 | 2026-08-07 |  | 0d |  |  | 56h |
| 55 | 1.4.5.1 | Desarrollar alta, baja, modificación y consulta de clientes | 7d | 2026-07-29 | 2026-08-07 | 44 | 0d |  | Esperanza, Franco | 56h |
| 56 | 1.4.6 | **Módulo de pedidos y ventas.** | 24d | 2026-08-07 | 2026-09-10 |  | 0d |  |  | 192h |
| 57 | 1.4.6.1 | Desarrollar registro de pedidos | 10d | 2026-08-07 | 2026-08-21 | 52, 55 | 0d |  | Takara, Joaquin | 80h |
| 58 | 1.4.6.2 | Desarrollar asignación de productos/lotes a pedidos | 7d | 2026-08-21 | 2026-09-01 | 57 | 0d |  | Takara, Joaquin | 56h |
| 59 | 1.4.6.3 | Desarrollar registro de ventas | 7d | 2026-09-01 | 2026-09-10 | 58 | 0d |  | Veliz Condori, Ruben | 56h |
| 60 | 1.4.7 | **Módulo de cobranzas.** | 15d | 2026-09-10 | 2026-10-01 |  | 0d |  |  | 112h |
| 61 | 1.4.7.1 | Desarrollar registro de cobranzas | 7d | 2026-09-10 | 2026-09-21 | 59 | 0d |  | Veliz Condori, Ruben | 56h |
| 62 | 1.4.7.2 | Desarrollar control de estados de cobranza | 7d | 2026-09-22 | 2026-10-01 | 61 | 0d |  | Veliz Condori, Ruben | 56h |
| 63 | 1.4.8 | **Módulo de importación de archivos Excel.** | 22d | 2026-08-21 | 2026-09-22 |  | 7d |  |  | 64h |
| 64 | 1.4.8.1 | Desarrollar importación de pedidos desde Excel | 7d | 2026-08-21 | 2026-09-01 | 57 | 7d | 0d | Esperanza, Franco | 56h |
| 65 | 1.4.8.2 | Validar estructura de archivos importados | 1d | 2026-09-21 | 2026-09-22 | 64 | 7d |  | Veliz Condori, Ruben | 8h |
| 66 | 1.4.9 | **Módulo de reportes.** | 10d | 2026-10-01 | 2026-10-15 |  | 0d |  |  | 80h |
| 67 | 1.4.9.1 | Desarrollar reportes de producción, stock y ventas | 10d | 2026-10-01 | 2026-10-15 | 50, 53, 59, 62, 65 | 0d |  | Moritan, Victoria | 80h |
| 68 | 1.4.10 | Integracion de Modulos | 5d | 2026-10-15 | 2026-10-22 | 44, 47, 50, 53, 55, 59, 62, 65, 67 | 0d |  | Moritan, Victoria | 40h |
| 69 | 1.5 | **Pruebas y validación** | 103d | 2026-07-09 | 2026-12-01 |  | 0d |  |  | 312h |
| 70 | 1.5.1 | **Pruebas funcionales por módulos.** | 79d | 2026-07-09 | 2026-10-28 |  | 0d |  |  | 88h |
| 71 | 1.5.1.1 | Preparar casos de prueba por módulo | 7d | 2026-07-09 | 2026-07-20 | 40 | 68d |  | Esperanza, Franco | 56h |
| 72 | 1.5.1.2 | Ejecutar pruebas funcionales | 4d | 2026-10-22 | 2026-10-28 | 68, 71 | 0d |  | Moritan, Victoria | 32h |
| 73 | 1.5.2 | **Pruebas de integración.** | 5d | 2026-10-28 | 2026-11-04 |  | 0d |  |  | 80h |
| 74 | 1.5.2.1 | Probar integración entre producción, trazabilidad y stock | 5d | 2026-10-28 | 2026-11-04 | 72 | 0d |  | Pagani, Franco | 40h |
| 75 | 1.5.2.2 | Probar integración entre pedidos, ventas y cobranzas | 5d | 2026-10-28 | 2026-11-04 | 72 | 0d |  | Veliz Condori, Ruben | 40h |

| ID | WBS | Task | Type | Duration | Start | Finish | Predecessors | Total slack | Free slack | Resources | Work |
| --- | --- | --- | --- | --- | --- | --- | --- | --- | --- | --- | --- |
| 76 | 1.5.3 | **Pruebas de datos.** |  | 6d | 2026-11-04 | 2026-11-12 |  | 0d |  |  | 48h |
| 77 | 1.5.3.1 | Verificar consistencia de datos cargados |  | 3d | 2026-11-04 | 2026-11-09 | 74, 75 | 0d |  | Takara, Joaquin | 24h |
| 78 | 1.5.3.2 | Corregir errores detectados en pruebas |  | 3d | 2026-11-09 | 2026-11-12 | 77 | 0d |  | Moritan, Victoria | 24h |
| 79 | 1.5.4 | **Validación con el cliente.** |  | 13d | 2026-11-12 | 2026-12-01 |  | 0d |  |  | 96h |
| 80 | 1.5.4.1 | Presentar funcionalidades al cliente |  | 3d | 2026-11-12 | 2026-11-17 | 78 | 0d |  | Esperanza, Franco | 24h |
| 81 | 1.5.4.2 | Registrar observaciones del cliente |  | 2d | 2026-11-18 | 2026-11-20 | 80 | 0d |  | Esperanza, Franco | 16h |
| 82 | 1.5.4.3 | Realizar ajustes finales |  | 7d | 2026-11-20 | 2026-12-01 | 81 | 0d |  | Moritan, Victoria | 56h |
| 83 | 1.6 | **Documentación y entrega** |  | 28d | 2026-10-22 | 2026-12-01 |  | 0d |  |  | 200h |
| 84 | 1.6.1 | **Documentación del proyecto.** |  | 11d | 2026-10-22 | 2026-11-06 |  | 1d |  |  | 96h |
| 85 | 1.6.1.1 | Redactar documentación técnica del proyecto |  | 7d | 2026-10-28 | 2026-11-06 | 68 | 1d | 0d | Moritan, Victoria | 56h |
| 86 | 1.6.1.2 | Actualizar diagramas y anexos |  | 5d | 2026-10-22 | 2026-11-05 | 68 | 2d | 1d | Pagani, Franco | 40h |
| 87 | 1.6.2 | **Manual o guía de uso.** |  | 8d | 2026-11-06 | 2026-11-18 |  | 1d |  |  | 40h |
| 88 | 1.6.2.1 | Elaborar manual de usuario |  | 5d | 2026-11-06 | 2026-11-18 | 85, 86 | 1d | 0d | Esperanza, Franco | 40h |
| 89 | 1.6.3 | **Presentación del sistema.** |  | 8d | 2026-11-18 | 2026-11-30 |  | 1d |  |  | 64h |
| 90 | 1.6.3.1 | Preparar presentación del sistema |  | 3d | 2026-11-18 | 2026-11-23 | 88 | 1d | 0d | Takara, Joaquin | 24h |
| 91 | 1.6.3.2 | Ensayar presentación |  | 5d | 2026-11-23 | 2026-11-30 | 90 | 1d |  | Veliz Condori, Ruben | 40h |
| 92 | 1.6.4 | Entrega final. | milestone | 0d | 2026-12-01 | 2026-12-01 | 82, 88, 91 | 0d |  | Moritan, Victoria |  |
